Schedule from MS Project, 2026-04-17 to 2026-07-06, costs in COP.
Microsoft

## Calendars

- Cerebrum: Mon-Fri 09:00-13:00, 15:00-19:00; Sat-Sun off. Exceptions (off unless hours are given): 2026-05-01 (Dia del trabajo), 2026-05-18 (Día de la Ascensión), 2026-06-08 (Corpus Christi), 2026-06-15 (Sagrado Corazón), 2026-06-29 (San Pedro y San Pablo).

## Resources

| Resource | Rate |
| --- | --- |
| Kevin | 25000 |
| Gabriel | 25000 |
| Iván | 25000 |
| Johan | 25000 |

## Schedule

| ID | WBS | Task | Type | Duration | Start | Finish | Predecessors | Total slack | Constraint | Resources | Work | Cost |
| --- | --- | --- | --- | --- | --- | --- | --- | --- | --- | --- | --- | --- |
| 1 | 1 | **Cerebrum** |  | 50.25d | 2026-04-17 | 2026-07-06 |  | 0d |  |  | 1598h | 39,950,000 |
| 2 | 1.1 | INICIO | milestone | 0d | 2026-04-22 | 2026-04-22 |  | 48d |  |  |  |  |
| 3 | 1.2 | **FASE 1: Arquitectura y Diseño UI/UX** |  | 10d | 2026-04-17 | 2026-05-04 |  | 0.25d |  |  | 320h | 8,000,000 |
| 4 | 1.2.1 | Diagramas UML, Base de Datos y Repositorio |  | 10d | 2026-04-17 | 2026-05-04 |  | 0.25d | finish no earlier than 2026-05-04 | Gabriel; Kevin | 160h | 4,000,000 |
| 5 | 1.2.2 | UI/UX, Diseño del Pulpo y Maquetación Base HTML/CSS |  | 10d | 2026-04-17 | 2026-05-04 |  | 0.25d | finish no earlier than 2026-05-04 | Johan; Iván | 160h | 4,000,000 |
| 6 | 1.3 | **FASE 2: Usuarios, Academias y Roles** |  | 15d | 2026-05-05 | 2026-05-26 | 3 | 0d |  |  | 480h | 12,000,000 |
| 7 | 1.3.1 | Backend Auth y Super Admin (Lógica y BD) |  | 15d | 2026-05-05 | 2026-05-26 |  | 0d | start no earlier than 2026-05-05 | Kevin | 120h | 3,000,000 |
| 8 | 1.3.2 | Backend Academias y Profesores (Lógica y BD) |  | 15d | 2026-05-05 | 2026-05-26 |  | 0d | start no earlier than 2026-05-05 | Gabriel | 120h | 3,000,000 |
| 9 | 1.3.3 | Frontend Auth y Vistas del Super Admin |  | 15d | 2026-05-05 | 2026-05-26 |  | 0d | start no earlier than 2026-05-05 | Iván | 120h | 3,000,000 |
| 10 | 1.3.4 | Frontend Paneles de Academias y Profesores |  | 15d | 2026-05-05 | 2026-05-26 |  | 0d | start no earlier than 2026-05-05 | Johan | 120h | 3,000,000 |
| 11 | 1.4 | **FASE 3: Motor Académico y Contenidos** |  | 15d | 2026-05-27 | 2026-06-18 | 6 | 0d |  |  | 480h | 12,000,000 |
| 12 | 1.4.1 | Algoritmo de 10 Preguntas y Bloqueos Aleatorio/Premium |  | 15d | 2026-05-27 | 2026-06-18 |  | 0d | start no earlier than 2026-05-27 | Kevin | 120h | 3,000,000 |
| 13 | 1.4.2 | Lógica de Contenidos Obligatorios (Videos/Textos) |  | 15d | 2026-05-27 | 2026-06-18 |  | 0d | start no earlier than 2026-05-27 | Gabriel | 120h | 3,000,000 |
| 14 | 1.4.3 | Interfaz interactiva de Cuestionarios y Materias |  | 15d | 2026-05-27 | 2026-06-18 |  | 0d | start no earlier than 2026-05-27 | Iván | 120h | 3,000,000 |
| 15 | 1.4.4 | Visor Multimedia de Contenidos para el Estudiante |  | 15d | 2026-05-27 | 2026-06-18 |  | 0d | start no earlier than 2026-05-27 | Johan | 120h | 3,000,000 |
| 16 | 1.5 | **FASE 4: QA, Pruebas y Empaquetado** |  | 10d | 2026-06-19 | 2026-07-03 | 11 | 0d |  |  | 318h | 7,950,000 |
| 17 | 1.5.1 | Pruebas de Integración y validación de endpoints |  | 10d | 2026-06-19 | 2026-07-03 |  | 0d | start no earlier than 2026-06-19 | Kevin | 80h | 2,000,000 |
| 18 | 1.5.2 | QA General, revisión de bloqueos y corrección de Bugs |  | 10d | 2026-06-19 | 2026-07-03 |  | 0d | start no earlier than 2026-06-19 | Gabriel | 80h | 2,000,000 |
| 19 | 1.5.3 | Pruebas de Usabilidad e interfaces responsivas |  | 10d | 2026-06-19 | 2026-07-03 |  | 0d | start no earlier than 2026-06-19 | Iván | 80h | 2,000,000 |
| 20 | 1.5.4 | Empaquetado móvil (Capacitor) y Despliegue final |  | 10d | 2026-06-19 | 2026-07-03 |  | 0d | finish no earlier than 2026-07-02 | Johan [97.5%] | 78h | 1,950,000 |
| 21 | 1.6 | fin | milestone | 0d | 2026-07-06 | 2026-07-06 |  | 0d | start no earlier than 2026-07-06 |  |  |  |
